Schedule from MS Project, 2023-04-03 to 2023-07-10, costs in р..
Microsoft

## Calendars

- Стандартный: Mon-Fri 09:00-13:00, 14:00-18:00; Sat-Sun off. Exceptions (off unless hours are given): 2023-05-01 (День Весны и Труда), 2023-05-08 to 2023-05-09 (День Победы), 2023-06-12 (День России).

## Resources

| Resource | Group | Unit | Rate | Cost per use |
| --- | --- | --- | --- | --- |
| Аналитик |  |  | 500 | 5000 |
| Ведущий программист | Программисты |  | 437.5 | 3000 |
| Программист 1 | Программисты |  | 312.5 | 2000 |
| Программист 2 | Программисты |  | 312.5 | 2000 |
| Программист 3 | Программисты |  | 312.5 | 2000 |
| Технический писатель |  |  | 250 | 1500 |
| Наборщики данных | Технический персонал |  | 218.75 | 1000 |
| Сервер базы данных | Оборудование |  | 25000 | 10000 |
| Картриджи для принтера | Расходные материалы | шт | 2500 |  |
| Бумага | Расходные материалы | пач | 200 |  |

## Schedule

| ID | WBS | Task | Type | Duration | Start | Finish | Predecessors | Baseline start | Baseline finish | Baseline duration | Total slack | Free slack | Constraint | Resources | Work | Cost | Baseline cost |
| --- | --- | --- | --- | --- | --- | --- | --- | --- | --- | --- | --- | --- | --- | --- | --- | --- | --- |
| 1 | 1 | **Профилактика оборудования** |  | 46.38d | 2023-04-25 | 2023-07-04 |  | 2023-04-25 | 2023-07-04 | 46.38d | 0d |  |  |  | 108h | 15,000 | 15,000 |
| 2 | 1.1 | Профилактика оборудования 1 | manual | 3h | 2023-04-25 | 2023-04-25 |  | 2023-04-25 | 2023-04-25 | 3h |  |  | start no earlier than 2023-04-25 | Аналитик; Ведущий программист; Наборщики данных [200%]; Программист 1; Программист 2; Программист 3; Технический писатель | 21h | 3,000 | 3,000 |
| 3 | 1.2 | Профилактика оборудования 2 | manual | 3h | 2023-05-23 | 2023-05-23 |  | 2023-05-23 | 2023-05-23 | 3h |  |  | start no earlier than 2023-05-23 | Аналитик; Ведущий программист; Наборщики данных [200%]; Программист 1; Программист 2; Программист 3; Технический писатель | 24h | 3,000 | 3,000 |
| 4 | 1.3 | Профилактика оборудования 3 | manual | 3h | 2023-06-06 | 2023-06-06 |  | 2023-06-06 | 2023-06-06 | 3h |  |  | start no earlier than 2023-06-06 | Аналитик; Ведущий программист; Наборщики данных [200%]; Программист 1; Программист 2; Программист 3; Технический писатель | 21h | 3,000 | 3,000 |
| 5 | 1.4 | Профилактика оборудования 4 | manual | 3h | 2023-06-20 | 2023-06-20 |  | 2023-06-20 | 2023-06-20 | 3h |  |  | start no earlier than 2023-06-20 | Аналитик; Ведущий программист; Наборщики данных [200%]; Программист 1; Программист 2; Программист 3; Технический писатель | 21h | 3,000 | 3,000 |
| 6 | 1.5 | Профилактика оборудования 5 | manual | 3h | 2023-07-04 | 2023-07-04 |  | 2023-07-04 | 2023-07-04 | 3h |  |  | start no earlier than 2023-07-04 | Аналитик; Ведущий программист; Наборщики данных [200%]; Программист 1; Программист 2; Программист 3; Технический писатель | 21h | 3,000 | 3,000 |
| 7 | 2 | Начало реализации проекта | milestone | 0d | 2023-04-03 | 2023-04-03 |  | 2023-04-03 | 2023-04-03 | 0d | 0d |  |  |  |  |  |  |
| 8 | 3 | **Программирование** |  | 29.75d | 2023-04-04 | 2023-05-18 |  | 2023-04-04 | 2023-05-18 | 29.75d | 0d |  |  | Сервер базы данных | 816h | 344,437.5 | 344,437.5 |
| 9 | 3.1 | Постановка задачи |  | 5d | 2023-04-04 | 2023-04-10 | 7FS+1d | 2023-04-04 | 2023-04-10 | 5d | 0d |  |  | Аналитик; Ведущий программист | 80h | 45,500 | 45,500 |
| 10 | 3.2 | Разработка интерфейса |  | 5d | 2023-04-11 | 2023-04-17 | 9 | 2023-04-11 | 2023-04-17 | 5d | 0d |  |  | Ведущий программист; Программист 1; Программист 2; Программист 3 | 160h | 64,000 | 64,000 |
| 11 | 3.3 | Разработка модулей обработки данных |  | 13.75d | 2023-04-26 | 2023-05-18 | 10 | 2023-04-26 | 2023-05-18 | 13.75d | 0d |  |  | Программист 2; Программист 3; Программист 1 | 240h | 81,000 | 81,000 |
| 12 | 3.4 | Разработка базы данных |  | 14.38d | 2023-04-11 | 2023-05-02 | 9 | 2023-04-11 | 2023-05-02 | 14.38d | 4d | 0d |  | Аналитик; Программист 1; Программист 2; Программист 3 | 240h | 94,437.5 | 94,437.5 |
| 13 | 3.5 | Заполнение базы данных |  | 6d | 2023-05-02 | 2023-05-12 | 12 | 2023-05-02 | 2023-05-12 | 6d | 4d |  |  | Наборщики данных [200%] | 96h | 23,000 | 23,000 |
| 14 | 4 | Программирование завершено | milestone | 0d | 2023-05-18 | 2023-05-18 | 11, 13 | 2023-05-18 | 2023-05-18 | 0d | 0d |  |  |  |  |  |  |
| 15 | 5 | **Тестирование и отладка** |  | 24.5d | 2023-05-15 | 2023-06-19 |  | 2023-05-15 | 2023-06-19 | 24.5d | 15.38d |  |  |  | 320h | 125,000 | 125,000 |
| 16 | 5.1 | Подготовка тестовых наборов данных |  | 8.75d | 2023-05-15 | 2023-05-26 | 14FS-5d | 2023-05-15 | 2023-05-26 | 8.75d | 15.38d | 0d |  | Программист 1; Программист 3 | 80h | 29,000 | 29,000 |
| 17 | 5.2 | Тестирование и исправление ошибок |  | 15d | 2023-05-26 | 2023-06-19 | 16 | 2023-05-26 | 2023-06-19 | 15d | 15.38d | 0d |  | Ведущий программист; Программист 2 | 240h | 95,000 | 95,000 |
| 18 | 6 | Отладка завершена | milestone | 0d | 2023-06-19 | 2023-06-19 | 17 | 2023-06-19 | 2023-06-19 | 0d | 15.38d | 26d |  |  |  |  |  |
| 19 | 7 | **Разработка документации** |  | 26.12d | 2023-06-01 | 2023-07-10 |  | 2023-06-01 | 2023-07-10 | 26.12d | 0d |  |  | Бумага [0.01 пач]; Картриджи для принтера [0.01 шт] | 200h | 59,792.5 | 59,792.5 |
| 20 | 7.1 | Составление программной документации |  | 10d | 2023-06-01 | 2023-06-19 | 14SS+10d | 2023-06-01 | 2023-06-19 | 10d | 0d |  |  | Технический писатель | 80h | 21,500 | 21,500 |
| 21 | 7.2 | Составление пользовательской документации |  | 15d | 2023-06-19 | 2023-07-10 | 20 | 2023-06-19 | 2023-07-10 | 15d | 0d |  |  | Технический писатель | 120h | 31,500 | 31,500 |
| 22 | 8 | Конец проекта | milestone | 0d | 2023-07-10 | 2023-07-10 | 21 | 2023-07-10 | 2023-07-10 | 0d | 0d |  |  |  |  |  |  |
